# 电解液充电能力评估（一 阶段）

Schedule from a web Gantt chart, 2025-12-09 to 2026-02-27.
Saturdays and Sundays are off

## Schedule

| ID | WBS | Task | Duration | Start | Finish | Predecessors | Complete | inPeople | Status |
| --- | --- | --- | --- | --- | --- | --- | --- | --- | --- |
| 2 | 1 | **平台工作（本征参数测量）** | 36d | 2025-12-09 | 2026-01-27 |  | 4% |  |  |
| 3 | 1.1 | **电解液配置（高通量）** | 17d | 2025-12-09 | 2025-12-31 |  | 9% | 邢玉泽 |  |
| 4 | 1.1.1 | 批次1 | 5d | 2025-12-09 | 2025-12-15 |  | 30% |  |  |
| 5 | 1.1.2 | 批次2 | 7d | 2025-12-16 | 2025-12-24 | 4 |  |  | waiting |
| 6 | 1.1.3 | 批次3 | 5d | 2025-12-25 | 2025-12-31 | 5 |  |  | waiting |
| 7 | 1.2 | **电解液配置+扩散系数收集（高通量）** | 19d | 2026-01-01 | 2026-01-27 |  |  | 邢玉泽; 孙宗杰 | waiting |
| 8 | 1.2.1 | 批次4 | 7d | 2026-01-01 | 2026-01-09 | 14 |  |  | waiting |
| 9 | 1.2.2 | 批次5 | 6d | 2026-01-12 | 2026-01-19 | 8 |  |  | waiting |
| 10 | 1.2.3 | 批次6 | 6d | 2026-01-20 | 2026-01-27 | 9 |  |  | waiting |
| 11 | 2 | **方法类工作（提升准确性&通量）** | 41d | 2025-12-09 | 2026-02-03 |  | 6% |  |  |
| 12 | 2.1 | 迁移数方法可靠性验证 | 10d | 2025-12-09 | 2025-12-22 |  | 40% | 李岩岩 |  |
| 13 | 2.2 | 扩散系数方法在羧酸酯体系优化 | 6d | 2025-12-16 | 2025-12-23 | 4 |  | 孙宗杰 | waiting |
| 14 | 2.3 | 扩散系数高通量数据处理 | 9d | 2025-12-19 | 2025-12-31 |  |  | 孙宗杰 | waiting |
| 15 | 2.4 | **迁移数采集** | 31d | 2025-12-23 | 2026-02-03 |  |  | 李岩岩 | waiting |
| 16 | 2.4.1 | 批次1 | 5d | 2025-12-23 | 2025-12-29 | 4, 12 |  |  | waiting |
| 17 | 2.4.2 | 批次2 | 6d | 2025-12-25 | 2026-01-01 | 5 |  |  | waiting |
| 18 | 2.4.3 | 批次3 | 5d | 2026-01-01 | 2026-01-07 | 6 |  |  | waiting |
| 19 | 2.4.4 | 批次4（+电极电势） | 6d | 2026-01-12 | 2026-01-19 | 8 |  |  | waiting |
| 20 | 2.4.5 | 批次5（+电极电势） | 5d | 2026-01-20 | 2026-01-26 | 9, 19 |  |  | waiting |
| 21 | 2.4.6 | 批次6（+电极电势） | 5d | 2026-01-28 | 2026-02-03 | 10, 20 |  |  | waiting |
| 22 | 2.5 | **扩散系数、电极电势收集** | 14d | 2025-12-24 | 2026-01-12 |  |  | 夏习文; 孙宗杰 | waiting |
| 23 | 2.5.1 | 批次1（手动） | 5d | 2025-12-24 | 2025-12-30 | 4, 13 |  |  | waiting |
| 24 | 2.5.2 | 批次2（手动） | 5d | 2025-12-31 | 2026-01-06 | 5, 23 |  |  | waiting |
| 25 | 2.5.3 | 批次3（手动） | 4d | 2026-01-07 | 2026-01-12 | 6, 24 |  |  | waiting |

Notes:
- 4: EL1~EL15，涵盖MID设计体系

| ID | WBS | Task | Duration | Start | Finish | Predecessors | inPeople | Status |
| --- | --- | --- | --- | --- | --- | --- | --- | --- |
| 26 | 3 | **模型工作（参数模型、电化学仿真）** | 59d | 2025-12-09 | 2026-02-27 |  |  |  |
| 27 | 3.1 | **仿真模型对标优化** | 30d | 2025-12-09 | 2026-01-19 |  | 夏习文; 刘荣康 |  |
| 28 | 3.1.1 | 电性能对标数据收集 | 14d | 2025-12-09 | 2025-12-26 |  |  |  |
| 29 | 3.1.2 | 电迁移、扩散电流拆分 | 14d | 2025-12-12 | 2025-12-31 |  |  |  |
| 30 | 3.1.3 | 基于本征参数的模型调优 | 18d | 2025-12-25 | 2026-01-19 |  |  | waiting |
| 31 | 3.2 | **参数模型建设（基于 5 元配方）** | 25d | 2026-01-09 | 2026-02-12 |  | 孙宗杰 | waiting |
| 32 | 3.2.1 | 电导率模型 | 11d | 2026-01-09 | 2026-01-23 |  |  | waiting |
| 33 | 3.2.2 | 扩散系数模型 | 11d | 2026-01-26 | 2026-02-09 |  |  | waiting |
| 34 | 3.2.3 | 迁移数模型（视情况） | 8d | 2026-02-03 | 2026-02-12 |  |  | waiting |
| 35 | 3.3 | 基于参数模型的性能预测 | 11d | 2026-02-13 | 2026-02-27 | 31, 27 | 刘荣康; 孙宗杰 | waiting |
